# NCICBSecurityService_phase3

Schedule from MS Project, 2004-09-27 to 2005-11-30, A marks actual dates.
Home

## Calendars

- Standard: Mon-Fri 08:00-12:00, 13:00-17:00; Sat-Sun off.

## Resources

| Resource |
| --- |
| Vinay |
| Resource 1 |
| Brian |
| Kalpesh |
| Kunal |
| Eric |
| Charles |
| Team |
| Steve |
| JJ |
| Kunal Eric |
| Viany |
| New |
| XYZ |

## Schedule

| ID | WBS | Task | Duration | Start | Finish | Predecessors | Complete | Remaining | Total slack | Free slack | Constraint | Resources | Work | Actual work |
| --- | --- | --- | --- | --- | --- | --- | --- | --- | --- | --- | --- | --- | --- | --- |
| 1 | 1 | **Security Module (Release four)** | 308d? | 2004-09-27 A | 2005-11-30 |  | 3% | 298d? | 0d |  |  |  | 4521.6h | 216.8h |
| 2 | 1.1 | Application Integration and Support | 1d? | 2004-09-27 | 2004-09-27 |  |  |  | 307d |  |  |  |  |  |
| 3 | 1.2 | **Inception** | 25d? | 2005-04-01 A | 2005-05-05 |  | 29% | 17.75d? | 149d |  |  |  | 824h | 216.8h |
| 4 | 1.2.1 | Phase 3 Evaluation | 5.25d | 2005-04-04 A | 2005-04-11 |  | 67% | 1.75d | 164.75d | 0d | start no earlier than 2004-08-02 | Vinay; Kunal | 56h | 28h |
| 5 | 1.2.2 | RI Fixing | 3d | 2005-04-11 | 2005-04-14 | 4 |  |  | 164.75d |  |  | Kunal; Brian | 48h |  |
| 6 | 1.2.3 | RI documentation | 7d | 2005-04-01 A | 2005-04-11 A |  | 100% |  |  |  | finish no earlier than 2005-04-11 | Kunal; Eric | 112h | 112h |
| 7 | 1.2.4 | Ri Testing and release | 4d | 2005-04-12 A | 2005-04-15 | 6 | 5% | 3.8d | 163d |  | finish no earlier than 2005-04-15 | Kunal; Eric; Vinay | 96h | 4.8h |
| 8 | 1.2.5 | caBIG Annual Meeting | 2d | 2005-04-12 A | 2005-04-13 A | 7 | 100% |  |  |  |  | Vinay; Eric; Kunal; Kalpesh | 64h | 64h |
| 9 | 1.2.6 | Research & Analysis | 5d | 2005-04-14 | 2005-04-20 | 8 |  |  | 155d | 0d |  | Vinay; Kunal | 80h |  |
| 10 | 1.2.7 | CM configuration | 2d | 2005-04-21 | 2005-04-22 | 9 |  |  | 155d | 0d | start no earlier than 2005-04-20 | Vinay; Kunal | 32h |  |
| 11 | 1.2.8 | Overall Scope and Vision Document | 5d | 2005-04-11 A | 2005-04-21 |  | 20% | 4d | 22d | 0d | finish no earlier than 2005-04-21 | Vinay; Eric; Kunal | 104h | 8h |
| 12 | 1.2.9 | Supplentary Specifications | 3d | 2005-04-25 | 2005-04-27 | 10 |  |  | 155d |  | start no earlier than 2004-09-01 | Vinay; Kunal | 48h |  |
| 13 | 1.2.10 | SWG Meeting | 1d? | 2005-04-27 | 2005-04-27 |  |  |  | 155d |  | start no earlier than 2005-04-27 | Vinay; Kunal; Eric | 24h |  |
| 14 | 1.2.11 | Fuctional Specifications | 7d | 2005-04-22 | 2005-05-02 | 11 |  |  | 22d | 0d |  | Vinay; Kunal | 112h |  |
| 15 | 1.2.12 | Identify Risk List | 2d | 2005-05-03 | 2005-05-04 | 14 |  |  | 149d | 0d |  | Kalpesh; Vinay | 32h |  |
| 16 | 1.2.13 | Update Detail task plan | 1d | 2005-05-05 | 2005-05-05 | 15 |  |  | 149d |  | start no earlier than 2005-04-11 | Vinay; Charles | 16h |  |
| 17 | 1.3 | **3.1 Release** | 10d | 2005-05-03 | 2005-05-16 | 14 |  |  | 22d |  |  |  | 112h |  |
| 18 | 1.3.1 | Scope Document | 1d | 2005-05-03 | 2005-05-03 |  |  |  | 22d | 0d |  | Vinay; Kunal | 16h |  |
| 19 | 1.3.2 | API Changes & Bug Fixes | 2d | 2005-05-04 | 2005-05-05 | 18 |  |  | 22d | 0d |  | Vinay | 16h |  |
| 20 | 1.3.3 | UPT Changes & Bug Fixes | 2d | 2005-05-04 | 2005-05-05 | 18 |  |  | 147d | 0d |  | Kunal | 16h |  |
| 21 | 1.3.4 | Test API and UPT Changes | 2d | 2005-05-06 | 2005-05-09 | 19, 20 |  |  | 147d |  |  | Vinay; Eric | 32h |  |
| 22 | 1.3.5 | Incorporate in RI | 2d | 2005-05-06 | 2005-05-09 | 19 |  |  | 22d | 0d |  | Kunal | 16h |  |
| 23 | 1.3.6 | Test RI | 2d | 2005-05-10 | 2005-05-11 | 22 |  |  | 6.5d | 0d |  | Eric | 16h |  |
| 24 | 1.3.7 | Update Documentations | 2d | 2005-05-12 | 2005-05-13 | 23 |  |  | 22d | 0d |  |  |  |  |
| 25 | 1.3.8 | Releasing and Baselining | 1d | 2005-05-16 | 2005-05-16 | 24 |  |  | 22d | 0d |  |  |  |  |

| ID | WBS | Task | Duration | Start | Finish | Predecessors | Total slack | Free slack | Constraint | Resources | Work |
| --- | --- | --- | --- | --- | --- | --- | --- | --- | --- | --- | --- |
| 26 | 1.4 | **Elaboration** | 26d | 2005-05-17 | 2005-06-21 |  | 16d | 0d |  |  | 768h |
| 27 | 1.4.1 | **Iteration I** | 20d | 2005-05-17 | 2005-06-13 |  | 22d |  |  |  | 416h |
| 28 | 1.4.1.1 | Detailed Iteration Release Plan | 1d | 2005-05-17 | 2005-05-17 | 25 | 40d | 0d | start no earlier than 2005-05-17 | Vinay | 8h |
| 29 | 1.4.1.2 | Research Prototype Development | 20d | 2005-05-17 | 2005-06-13 | 25 | 22d |  | start no earlier than 2005-04-26 | XYZ; Kunal | 320h |
| 30 | 1.4.1.3 | Level 1 - 2 Use Cases | 5d | 2005-05-17 | 2005-05-23 | 25 | 37d |  | start no earlier than 2005-05-17 | Vinay; Eric | 80h |
| 31 | 1.4.1.4 | Peer Review of Use Cases | 1d | 2005-05-24 | 2005-05-24 |  | 36d |  | start no earlier than 2005-05-24 |  |  |
| 32 | 1.4.1.5 | Risk List Priority | 1d | 2005-05-18 | 2005-05-18 | 28 | 40d |  |  | Vinay | 8h |
| 33 | 1.4.1.6 | **Finalize Requirements** | 2d | 2005-05-26 | 2005-05-27 |  | 16d |  |  |  |  |
| 34 | 1.4.1.6.1 | User Working Group Review | 1d | 2005-05-26 | 2005-05-26 |  | 16d | 0d | start no earlier than 2005-05-26 |  |  |
| 35 | 1.4.1.6.2 | Stakeholder Sign Off | 1d | 2005-05-27 | 2005-05-27 | 34 | 16d | 0d | start no earlier than 2004-10-01 |  |  |
| 36 | 1.4.2 | **Iteration II** | 16d | 2005-05-30 | 2005-06-20 |  | 16d | 0d |  |  | 336h |
| 37 | 1.4.2.1 | Develop Architecture Prototype | 8d | 2005-05-30 | 2005-06-08 | 35 | 16d | 0d | finish no earlier than 2005-06-03 | Vinay; Kunal; XYZ | 192h |
| 38 | 1.4.2.2 | Software Architecture Document | 7d | 2005-06-08 | 2005-06-17 | 37 | 16d | 0d | start no earlier than 2005-06-02 | Vinay; Kunal; Eric | 112h |
| 39 | 1.4.2.3 | Architecture Peer Review | 1d | 2005-06-07 | 2005-06-07 |  | 25d |  | start no earlier than 2005-06-07 | Kunal; Vinay; Eric | 24h |
| 40 | 1.4.2.4 | Prioritize Risk List | 1d | 2005-06-20 | 2005-06-20 | 38 | 16d |  | start no earlier than 2004-10-26 | Vinay | 8h |
| 41 | 1.4.3 | Phase Review | 1d | 2005-06-21 | 2005-06-21 | 36 | 0.5d |  |  | Eric; Kalpesh | 16h |
| 42 | 1.5 | **Construction** | 93d | 2005-06-22 | 2005-10-28 |  | 0d |  |  |  | 2160h |
| 43 | 1.5.1 | **Iteration - SSO** | 32d | 2005-06-22 | 2005-08-05 |  | 15.5d | 0d |  |  | 392h |
| 44 | 1.5.1.1 | Detailed Iteration Plan | 1d | 2005-06-22 | 2005-06-22 | 26 | 16d | 0d | start no earlier than 2004-10-26 | Vinay; Kunal | 16h |
| 45 | 1.5.1.2 | **Design** | 5d | 2005-06-23 | 2005-06-29 |  | 16d |  |  |  | 88h |
| 46 | 1.5.1.2.1 | Level 3 - 4 Use Cases | 1d | 2005-06-23 | 2005-06-23 | 44 | 16d | 0d | start no earlier than 2004-10-27 | Kunal; Vinay | 16h |
| 47 | 1.5.1.2.2 | Use Case Model | 1d | 2005-06-24 | 2005-06-24 | 46 | 16d | 0d | start no earlier than 2004-10-27 | Vinay; Kunal | 16h |
| 48 | 1.5.1.2.3 | UML Sequence Diagram | 1d | 2005-06-27 | 2005-06-27 | 47 | 41.5d | 0d |  | Kunal | 8h |
| 49 | 1.5.1.2.4 | UML Class Diagram | 2d | 2005-06-28 | 2005-06-29 | 48 | 41.5d |  |  | Vinay | 16h |
| 50 | 1.5.1.2.5 | UML Activity Diagram | 1d | 2005-06-27 | 2005-06-27 | 47 | 16d | 0d | start no earlier than 2004-10-29 | Vinay | 8h |
| 51 | 1.5.1.2.6 | Design Review | 1d | 2005-06-28 | 2005-06-28 | 50 | 42.5d |  |  |  |  |
| 52 | 1.5.1.2.7 | Test Case Development | 3d | 2005-06-27 | 2005-06-29 | 47 | 26d |  |  | Eric | 24h |

Notes:
- 35: An email was sent out to the group and no one responded. Hence this task has been marked as 100%

| ID | WBS | Task | Type | Duration | Start | Finish | Predecessors | Total slack | Free slack | Constraint | Resources | Work |
| --- | --- | --- | --- | --- | --- | --- | --- | --- | --- | --- | --- | --- |
| 53 | 1.5.1.3 | **Implementation** |  | 27d | 2005-06-28 | 2005-08-03 |  | 16d |  |  |  | 200h |
| 54 | 1.5.1.3.1 | Environment Setup |  | 1d | 2005-06-28 | 2005-06-28 | 50 | 16d | 0d | start no earlier than 2004-11-01 | Vinay; Kunal | 16h |
| 55 | 1.5.1.3.2 | Code Development |  | 20d | 2005-06-29 | 2005-07-26 | 54 | 16d | 0d | start no earlier than 2004-11-08 | Vinay | 160h |
| 56 | 1.5.1.3.3 | Junit Test Development |  | 3d | 2005-07-15 | 2005-07-19 |  | 27.5d |  | start no earlier than 2005-07-15 |  |  |
| 57 | 1.5.1.3.4 | Code Reviews |  | 1.5d | 2005-07-27 | 2005-07-28 | 55 | 0.5d | 0d | finish no earlier than 2004-11-15 | Kalpesh; Charles | 24h |
| 58 | 1.5.1.3.5 | Bug Fixes |  | 2d | 2005-08-02 | 2005-08-03 | 57 | 16.5d |  | finish no earlier than 2005-08-03 |  |  |
| 59 | 1.5.1.4 | **Unit Testing** |  | 3d | 2005-07-22 | 2005-07-26 |  | 22.5d |  |  |  | 24h |
| 60 | 1.5.1.4.1 | Perform Testing |  | 3d | 2005-07-22 | 2005-07-26 |  | 22.5d |  | finish no earlier than 2005-07-26 | Kunal | 24h |
| 61 | 1.5.1.5 | **Integration Testing** |  | 5d | 2005-07-28 | 2005-08-04 |  | 16d |  |  |  | 56h |
| 62 | 1.5.1.5.1 | QA Testing |  | 4d | 2005-07-28 | 2005-08-03 | 57 | 0.5d | 0d |  | Eric | 32h |
| 63 | 1.5.1.5.2 | Evaluate Results |  | 1d | 2005-08-03 | 2005-08-04 | 62 | 16d |  | start no earlier than 2004-11-16 | Eric; Vinay; Kunal | 24h |
| 64 | 1.5.1.6 | User Working Group Review (SAD, Design Models) |  | 1d | 2005-08-04 | 2005-08-04 |  | 15.5d |  | start no earlier than 2005-08-04 | Kalpesh | 8h |
| 65 | 1.5.1.7 | Iteration Complete | milestone | 0d | 2005-08-05 | 2005-08-05 |  | 15.5d |  | start no earlier than 2005-08-05 |  |  |
| 66 | 1.5.2 | **Iteration - Auth Policy Caching** |  | 20.5d | 2005-06-22 | 2005-07-20 |  | 0.5d | 0d |  |  | 264h |
| 67 | 1.5.2.1 | Detailed Iteration Plan |  | 1d | 2005-06-22 | 2005-06-22 |  | 0.5d | 0d | start no earlier than 2005-06-22 | Vinay; Kunal | 16h |
| 68 | 1.5.2.2 | **Design** |  | 4d | 2005-06-23 | 2005-06-28 |  | 0.5d |  |  |  | 64h |
| 69 | 1.5.2.2.1 | Level 3 - 4 Use Cases |  | 1d | 2005-06-23 | 2005-06-23 | 67 | 0.5d | 0d | start no earlier than 2004-10-27 | Kunal; Vinay | 16h |
| 70 | 1.5.2.2.2 | Use Case Model |  | 1d | 2005-06-24 | 2005-06-24 | 69 | 0.5d | 0d | start no earlier than 2004-10-27 | Vinay; Kunal | 16h |
| 71 | 1.5.2.2.3 | UML Sequence Diagram |  | 1d | 2005-06-27 | 2005-06-27 | 70 | 16d | 0d |  | Kunal | 8h |
| 72 | 1.5.2.2.4 | UML Class Diagram |  | 1d | 2005-06-28 | 2005-06-28 | 71 | 16d |  |  | Vinay | 8h |
| 73 | 1.5.2.2.5 | UML Activity Diagram |  | 1d | 2005-06-27 | 2005-06-27 | 70 | 0.5d | 0d | start no earlier than 2004-10-29 | Vinay | 8h |
| 74 | 1.5.2.2.6 | Design Review |  | 1d | 2005-06-28 | 2005-06-28 | 73 | 16d |  |  |  |  |
| 75 | 1.5.2.2.7 | Test Case Development |  | 1d | 2005-06-27 | 2005-06-27 | 70 | 42d |  |  | Eric | 8h |
| 76 | 1.5.2.3 | **Implementation** |  | 15.5d | 2005-06-28 | 2005-07-19 |  | 0.5d |  |  |  | 120h |
| 77 | 1.5.2.3.1 | Environment Setup |  | 2d | 2005-06-28 | 2005-06-29 | 73 | 0.5d | 0d | start no earlier than 2004-11-01 | Vinay | 16h |
| 78 | 1.5.2.3.2 | Code Development |  | 10d | 2005-06-30 | 2005-07-13 | 77 | 0.5d | 0d | start no earlier than 2004-11-08 | Vinay | 80h |
| 79 | 1.5.2.3.3 | Junit Test Development |  | 1d | 2005-07-15 | 2005-07-15 |  | 3d |  | start no earlier than 2005-07-15 |  |  |
| 80 | 1.5.2.3.4 | Code Reviews |  | 1.5d | 2005-07-14 | 2005-07-15 | 78 | 25.5d | 0d | finish no earlier than 2004-11-15 | Kalpesh; Charles | 24h |
| 81 | 1.5.2.3.5 | Bug Fixes |  | 2d | 2005-07-15 | 2005-07-19 | 80 | 1.5d |  | finish no earlier than 2005-07-18 |  |  |

| ID | WBS | Task | Type | Duration | Start | Finish | Predecessors | Total slack | Free slack | Constraint | Resources | Work |
| --- | --- | --- | --- | --- | --- | --- | --- | --- | --- | --- | --- | --- |
| 82 | 1.5.2.4 | **Unit Testing** |  | 3d | 2005-07-08 | 2005-07-12 |  | 6d |  |  |  | 24h |
| 83 | 1.5.2.4.1 | Perform Testing |  | 3d | 2005-07-08 | 2005-07-12 |  | 6d |  | finish no earlier than 2005-07-12 | Vinay | 24h |
| 84 | 1.5.2.5 | **Integration Testing** |  | 3d | 2005-07-15 | 2005-07-20 |  | 0.5d |  |  |  | 40h |
| 85 | 1.5.2.5.1 | QA Testing |  | 2d | 2005-07-15 | 2005-07-19 | 80 | 25.5d | 0d |  | Eric | 16h |
| 86 | 1.5.2.5.2 | Evaluate Results |  | 1d | 2005-07-19 | 2005-07-20 | 85 | 0.5d |  | start no earlier than 2004-11-16 | Eric; Vinay; Kunal | 24h |
| 87 | 1.5.2.6 | Iteration Complete | milestone | 0d | 2005-07-20 | 2005-07-20 |  | 1d |  | start no earlier than 2005-07-20 |  |  |
| 88 | 1.5.3 | **Iteration - Authentication Web Service** |  | 14d | 2005-08-05 | 2005-08-24 | 43 | 15.5d | 0d |  |  | 192h |
| 89 | 1.5.3.1 | Detailed Iteration Plan |  | 1d | 2005-08-05 | 2005-08-05 |  | 15.5d | 0d | start no earlier than 2004-10-26 | Vinay; Kunal | 16h |
| 90 | 1.5.3.2 | **Design** |  | 5d | 2005-08-08 | 2005-08-12 |  | 15.5d |  |  |  | 64h |
| 91 | 1.5.3.2.1 | Level 3 - 4 Use Cases |  | 1d | 2005-08-08 | 2005-08-08 | 89 | 15.5d | 0d | start no earlier than 2004-10-27 | Kunal; Vinay | 16h |
| 92 | 1.5.3.2.2 | Use Case Model |  | 2d | 2005-08-09 | 2005-08-10 | 91 | 15.5d | 0d | start no earlier than 2004-10-27 | Kunal | 16h |
| 93 | 1.5.3.2.3 | UML Sequence Diagram |  | 1d | 2005-08-11 | 2005-08-11 | 92 | 23.5d | 0d |  | Kunal | 8h |
| 94 | 1.5.3.2.4 | UML Class Diagram |  | 1d | 2005-08-12 | 2005-08-12 | 93 | 23.5d |  |  | Kunal | 8h |
| 95 | 1.5.3.2.5 | UML Activity Diagram |  | 1d | 2005-08-11 | 2005-08-11 | 92 | 15.5d | 0d | start no earlier than 2004-10-29 | Kunal | 8h |
| 96 | 1.5.3.2.6 | Design Review |  | 1d | 2005-08-12 | 2005-08-12 | 95 | 23.5d |  |  |  |  |
| 97 | 1.5.3.2.7 | Test Case Development |  | 1d | 2005-08-11 | 2005-08-11 | 92 | 9d |  |  | Eric | 8h |
| 98 | 1.5.3.3 | **Implementation** |  | 7d | 2005-08-12 | 2005-08-22 |  | 15.5d |  |  |  | 56h |
| 99 | 1.5.3.3.1 | Environment Setup |  | 1d | 2005-08-12 | 2005-08-12 | 95 | 15.5d | 0d | start no earlier than 2004-11-01 | Kunal | 8h |
| 100 | 1.5.3.3.2 | Code Development |  | 4d | 2005-08-15 | 2005-08-18 | 99 | 15.5d | 0d | start no earlier than 2004-11-08 | Kunal | 32h |
| 101 | 1.5.3.3.3 | Junit Test Development |  | 1d | 2005-08-17 | 2005-08-17 |  | 20.5d |  | start no earlier than 2005-08-17 |  |  |
| 102 | 1.5.3.3.4 | Code Reviews |  | 1d | 2005-08-19 | 2005-08-19 | 100 | 15.5d | 0d | finish no earlier than 2004-11-15 | Kalpesh; Charles | 16h |
| 103 | 1.5.3.3.5 | Bug Fixes |  | 1d | 2005-08-22 | 2005-08-22 | 102 | 17.5d |  | finish no earlier than 2005-08-03 |  |  |
| 104 | 1.5.3.4 | **Unit Testing** |  | 2d | 2005-08-18 | 2005-08-19 |  | 18.5d |  |  |  | 16h |
| 105 | 1.5.3.4.1 | Perform Testing |  | 2d | 2005-08-18 | 2005-08-19 |  | 18.5d |  | finish no earlier than 2005-08-19 | Kunal | 16h |

| ID | WBS | Task | Type | Duration | Start | Finish | Predecessors | Total slack | Free slack | Constraint | Resources | Work |
| --- | --- | --- | --- | --- | --- | --- | --- | --- | --- | --- | --- | --- |
| 106 | 1.5.3.5 | **Integration Testing** |  | 3d | 2005-08-22 | 2005-08-24 |  | 15.5d |  |  |  | 40h |
| 107 | 1.5.3.5.1 | QA Testing |  | 2d | 2005-08-22 | 2005-08-23 | 102 | 15.5d | 0d | start no earlier than 2005-08-22 | Eric | 16h |
| 108 | 1.5.3.5.2 | Evaluate Results |  | 1d | 2005-08-24 | 2005-08-24 | 107 | 15.5d |  | start no earlier than 2004-11-16 | Eric; Vinay; Kunal | 24h |
| 109 | 1.5.3.6 | Iteration Complete | milestone | 0d | 2005-08-05 | 2005-08-05 |  | 29.5d |  | start no earlier than 2005-08-05 |  |  |
| 110 | 1.5.4 | **Iteration - Policy Adapters** |  | 20.5d | 2005-07-20 | 2005-08-18 | 66 | 0d |  |  |  | 272h |
| 111 | 1.5.4.1 | Detailed Iteration Plan |  | 1d | 2005-07-20 | 2005-07-21 |  | 0.5d | 0d | start no earlier than 2004-10-26 | Vinay; Kunal | 16h |
| 112 | 1.5.4.2 | **Design** |  | 4d | 2005-07-21 | 2005-07-27 |  | 0.5d |  |  |  | 72h |
| 113 | 1.5.4.2.1 | Level 3 - 4 Use Cases |  | 1d | 2005-07-21 | 2005-07-22 | 111 | 0.5d | 0d | start no earlier than 2004-10-27 | Kunal; Vinay | 16h |
| 114 | 1.5.4.2.2 | Use Case Model |  | 1d | 2005-07-22 | 2005-07-25 | 113 | 0.5d | 0d | start no earlier than 2004-10-27 | Vinay; Kunal | 16h |
| 115 | 1.5.4.2.3 | UML Sequence Diagram |  | 1d | 2005-07-25 | 2005-07-26 | 114 | 15.5d | 0d |  | Kunal | 8h |
| 116 | 1.5.4.2.4 | UML Class Diagram |  | 1d | 2005-07-26 | 2005-07-27 | 115 | 15.5d |  |  | Vinay | 8h |
| 117 | 1.5.4.2.5 | UML Activity Diagram |  | 1d | 2005-07-25 | 2005-07-26 | 114 | 0.5d | 0d | start no earlier than 2004-10-29 | Vinay | 8h |
| 118 | 1.5.4.2.6 | Design Review |  | 1d | 2005-07-26 | 2005-07-27 | 117 | 15.5d |  |  |  |  |
| 119 | 1.5.4.2.7 | Test Case Development |  | 2d | 2005-07-25 | 2005-07-27 | 114 | 52d |  |  | Eric | 16h |
| 120 | 1.5.4.3 | **Implementation** |  | 14d | 2005-07-26 | 2005-08-15 |  | 0.5d |  |  |  | 112h |
| 121 | 1.5.4.3.1 | Environment Setup |  | 1d | 2005-07-26 | 2005-07-27 | 117 | 0.5d | 0d | start no earlier than 2004-11-01 | Vinay; Kunal | 16h |
| 122 | 1.5.4.3.2 | Code Development |  | 10d | 2005-07-27 | 2005-08-10 | 121 | 0.5d | 0d | start no earlier than 2004-11-08 | Vinay | 80h |
| 123 | 1.5.4.3.3 | Junit Test Development |  | 2d | 2005-08-01 | 2005-08-02 |  | 11d |  | start no earlier than 2005-08-01 |  |  |
| 124 | 1.5.4.3.4 | Code Reviews |  | 1d | 2005-08-10 | 2005-08-11 | 122 | 37d | 0d | finish no earlier than 2004-11-15 | Kalpesh; Charles | 16h |
| 125 | 1.5.4.3.5 | Bug Fixes |  | 2d | 2005-08-11 | 2005-08-15 | 124 | 2.5d |  | finish no earlier than 2005-08-03 |  |  |
| 126 | 1.5.4.4 | **Unit Testing** |  | 3d | 2005-08-08 | 2005-08-10 |  | 5d |  |  |  | 24h |
| 127 | 1.5.4.4.1 | Perform Testing |  | 3d | 2005-08-08 | 2005-08-10 |  | 5d |  | finish no earlier than 2005-08-10 | Kunal | 24h |
| 128 | 1.5.4.5 | **Integration Testing** |  | 4d | 2005-08-11 | 2005-08-17 |  | 0.5d |  |  |  | 48h |
| 129 | 1.5.4.5.1 | QA Testing |  | 3d | 2005-08-11 | 2005-08-16 | 124 | 37d | 0d |  | Eric | 24h |
| 130 | 1.5.4.5.2 | Evaluate Results |  | 1d | 2005-08-16 | 2005-08-17 | 129 | 0.5d |  | start no earlier than 2004-11-16 | Eric; Vinay; Kunal | 24h |
| 131 | 1.5.4.6 | Iteration Complete | milestone | 0d | 2005-08-18 | 2005-08-18 |  | 0d |  | start no earlier than 2005-08-18 |  |  |

| ID | WBS | Task | Type | Duration | Start | Finish | Predecessors | Total slack | Free slack | Constraint | Resources | Work |
| --- | --- | --- | --- | --- | --- | --- | --- | --- | --- | --- | --- | --- |
| 132 | 1.5.5 | **Iteration - UPT Enhancements** |  | 31.5d | 2005-08-25 | 2005-10-07 | 88 | 15.5d |  |  |  | 384h |
| 133 | 1.5.5.1 | Detailed Iteration Plan |  | 1d | 2005-08-25 | 2005-08-25 |  | 15.5d | 0d | start no earlier than 2004-10-26 | Vinay; Kunal | 16h |
| 134 | 1.5.5.2 | **Design** |  | 5d | 2005-08-26 | 2005-09-01 |  | 15.5d |  |  |  | 88h |
| 135 | 1.5.5.2.1 | Level 3 - 4 Use Cases |  | 1d | 2005-08-26 | 2005-08-26 | 133 | 15.5d | 0d | start no earlier than 2004-10-27 | Kunal; Vinay | 16h |
| 136 | 1.5.5.2.2 | Use Case Model |  | 1d | 2005-08-29 | 2005-08-29 | 135 | 15.5d | 0d | start no earlier than 2004-10-27 | Vinay; Kunal | 16h |
| 137 | 1.5.5.2.3 | UML Sequence Diagram |  | 1d | 2005-08-30 | 2005-08-30 | 136 | 41d | 0d |  | Kunal | 8h |
| 138 | 1.5.5.2.4 | UML Class Diagram |  | 2d | 2005-08-31 | 2005-09-01 | 137 | 41d |  |  | Vinay | 16h |
| 139 | 1.5.5.2.5 | UML Activity Diagram |  | 1d | 2005-08-30 | 2005-08-30 | 136 | 15.5d | 0d | start no earlier than 2004-10-29 | Vinay | 8h |
| 140 | 1.5.5.2.6 | Design Review |  | 1d | 2005-08-31 | 2005-08-31 | 139 | 42d |  |  |  |  |
| 141 | 1.5.5.2.7 | Test Case Development |  | 3d | 2005-08-30 | 2005-09-01 | 136 | 25.5d |  |  | Eric | 24h |
| 142 | 1.5.5.3 | **Implementation** |  | 27d | 2005-08-31 | 2005-10-06 |  | 15.5d |  |  |  | 200h |
| 143 | 1.5.5.3.1 | Environment Setup |  | 1d | 2005-08-31 | 2005-08-31 | 139 | 15.5d | 0d | start no earlier than 2004-11-01 | Vinay; Kunal | 16h |
| 144 | 1.5.5.3.2 | Code Development |  | 20d | 2005-09-01 | 2005-09-28 | 143 | 15.5d | 0d | start no earlier than 2004-11-08 | Vinay | 160h |
| 145 | 1.5.5.3.3 | Junit Test Development |  | 3d | 2005-09-26 | 2005-09-28 |  | 22d |  | finish no earlier than 2005-09-28 |  |  |
| 146 | 1.5.5.3.4 | Code Reviews |  | 1.5d | 2005-09-29 | 2005-09-30 | 144 | 15.5d | 0d | finish no earlier than 2004-11-15 | Kalpesh; Charles | 24h |
| 147 | 1.5.5.3.5 | Bug Fixes |  | 4d | 2005-10-03 | 2005-10-06 | 146 | 16d |  | start no earlier than 2005-10-03 |  |  |
| 148 | 1.5.5.4 | **Unit Testing** |  | 3d | 2005-08-25 | 2005-08-29 |  | 44d |  |  |  | 24h |
| 149 | 1.5.5.4.1 | Perform Testing |  | 3d | 2005-08-25 | 2005-08-29 |  | 44d |  | finish no earlier than 2005-07-26 | Kunal | 24h |
| 150 | 1.5.5.5 | **Integration Testing** |  | 5d | 2005-09-30 | 2005-10-07 |  | 15.5d |  |  |  | 56h |
| 151 | 1.5.5.5.1 | QA Testing |  | 4d | 2005-09-30 | 2005-10-06 | 146 | 15.5d | 0d |  | Eric | 32h |
| 152 | 1.5.5.5.2 | Evaluate Results |  | 1d | 2005-10-06 | 2005-10-07 | 151 | 15.5d |  | start no earlier than 2004-11-16 | Eric; Vinay; Kunal | 24h |
| 153 | 1.5.5.6 | Iteration Complete | milestone | 0d | 2005-10-07 | 2005-10-07 |  | 16d |  | start no earlier than 2005-10-07 |  |  |
| 154 | 1.5.6 | **Iteration - AOP Integration** |  | 31.5d | 2005-08-18 | 2005-09-30 | 110 | 0d |  |  |  | 392h |
| 155 | 1.5.6.1 | Detailed Iteration Plan |  | 1d | 2005-08-18 | 2005-08-18 |  | 0d |  | start no earlier than 2004-10-26 | Vinay; Kunal | 16h |

| ID | WBS | Task | Type | Duration | Start | Finish | Predecessors | Total slack | Free slack | Constraint | Resources | Work |
| --- | --- | --- | --- | --- | --- | --- | --- | --- | --- | --- | --- | --- |
| 156 | 1.5.6.2 | **Design** |  | 5d | 2005-08-19 | 2005-08-25 |  | 0d |  |  |  | 88h |
| 157 | 1.5.6.2.1 | Level 3 - 4 Use Cases |  | 1d | 2005-08-19 | 2005-08-19 | 155 | 0d |  | start no earlier than 2004-10-27 | Kunal; Vinay | 16h |
| 158 | 1.5.6.2.2 | Use Case Model |  | 1d | 2005-08-22 | 2005-08-22 | 157 | 0d |  | start no earlier than 2004-10-27 | Vinay; Kunal | 16h |
| 159 | 1.5.6.2.3 | UML Sequence Diagram |  | 1d | 2005-08-23 | 2005-08-23 | 158 | 25.5d | 0d |  | Kunal | 8h |
| 160 | 1.5.6.2.4 | UML Class Diagram |  | 2d | 2005-08-24 | 2005-08-25 | 159 | 25.5d |  |  | Vinay | 16h |
| 161 | 1.5.6.2.5 | UML Activity Diagram |  | 1d | 2005-08-23 | 2005-08-23 | 158 | 0d |  | start no earlier than 2004-10-29 | Vinay | 8h |
| 162 | 1.5.6.2.6 | Design Review |  | 1d | 2005-08-24 | 2005-08-24 | 161 | 26.5d |  |  |  |  |
| 163 | 1.5.6.2.7 | Test Case Development |  | 3d | 2005-08-23 | 2005-08-25 | 158 | 25.5d |  |  | Eric | 24h |
| 164 | 1.5.6.3 | **Implementation** |  | 28.5d | 2005-08-18 | 2005-09-27 |  | 3d |  |  |  | 200h |
| 165 | 1.5.6.3.1 | Environment Setup |  | 1d | 2005-08-24 | 2005-08-24 | 161 | 0d |  | start no earlier than 2004-11-01 | Vinay; Kunal | 16h |
| 166 | 1.5.6.3.2 | Code Development |  | 20d | 2005-08-25 | 2005-09-21 | 165 | 0d |  | start no earlier than 2004-11-08 | Vinay | 160h |
| 167 | 1.5.6.3.3 | Junit Test Development |  | 3d | 2005-08-18 | 2005-08-22 |  | 28.5d |  | start no earlier than 2005-07-15 |  |  |
| 168 | 1.5.6.3.4 | Code Reviews |  | 1.5d | 2005-09-22 | 2005-09-23 | 166 | 0d |  | finish no earlier than 2004-11-15 | Kalpesh; Charles | 24h |
| 169 | 1.5.6.3.5 | Bug Fixes |  | 2d | 2005-09-23 | 2005-09-27 | 168 | 3d |  | finish no earlier than 2005-08-03 |  |  |
| 170 | 1.5.6.4 | **Unit Testing** |  | 3d | 2005-08-18 | 2005-08-22 |  | 28.5d |  |  |  | 24h |
| 171 | 1.5.6.4.1 | Perform Testing |  | 3d | 2005-08-18 | 2005-08-22 |  | 28.5d |  | finish no earlier than 2005-07-26 | Kunal | 24h |
| 172 | 1.5.6.5 | **Integration Testing** |  | 5d | 2005-09-23 | 2005-09-30 |  | 0d |  |  |  | 56h |
| 173 | 1.5.6.5.1 | QA Testing |  | 4d | 2005-09-23 | 2005-09-29 | 168 | 0d |  |  | Eric | 32h |
| 174 | 1.5.6.5.2 | Evaluate Results |  | 1d | 2005-09-29 | 2005-09-30 | 173 | 0d |  | start no earlier than 2004-11-16 | Eric; Vinay; Kunal | 24h |
| 175 | 1.5.6.6 | User Working Group Review (SAD, Design Models) |  | 1d | 2005-08-18 | 2005-08-18 |  | 30.5d |  | start no earlier than 2005-08-04 | Kalpesh | 8h |
| 176 | 1.5.6.7 | Iteration Complete | milestone | 0d | 2005-08-18 | 2005-08-18 |  | 31.5d |  | start no earlier than 2005-08-05 |  |  |
| 177 | 1.5.7 | **Iteration - Message Level Security** |  | 20.5d | 2005-09-30 | 2005-10-28 | 154 | 0d |  |  |  | 264h |
| 178 | 1.5.7.1 | Detailed Iteration Plan |  | 1d | 2005-09-30 | 2005-10-03 |  | 0d |  | start no earlier than 2005-06-22 | Vinay; Kunal | 16h |
| 179 | 1.5.7.2 | **Design** |  | 4d | 2005-10-03 | 2005-10-07 |  | 0d |  |  |  | 64h |
| 180 | 1.5.7.2.1 | Level 3 - 4 Use Cases |  | 1d | 2005-10-03 | 2005-10-04 | 178 | 0d |  | start no earlier than 2004-10-27 | Kunal; Vinay | 16h |
| 181 | 1.5.7.2.2 | Use Case Model |  | 1d | 2005-10-04 | 2005-10-05 | 180 | 0d |  | start no earlier than 2004-10-27 | Vinay; Kunal | 16h |
| 182 | 1.5.7.2.3 | UML Sequence Diagram |  | 1d | 2005-10-05 | 2005-10-06 | 181 | 15.5d | 0d |  | Kunal | 8h |
| 183 | 1.5.7.2.4 | UML Class Diagram |  | 1d | 2005-10-06 | 2005-10-07 | 182 | 15.5d |  |  | Vinay | 8h |
| 184 | 1.5.7.2.5 | UML Activity Diagram |  | 1d | 2005-10-05 | 2005-10-06 | 181 | 0d |  | start no earlier than 2004-10-29 | Vinay | 8h |
| 185 | 1.5.7.2.6 | Design Review |  | 1d | 2005-10-06 | 2005-10-07 | 184 | 15.5d |  |  |  |  |
| 186 | 1.5.7.2.7 | Test Case Development |  | 1d | 2005-10-05 | 2005-10-06 | 181 | 16.5d |  |  | Eric | 8h |

| ID | WBS | Task | Type | Duration | Start | Finish | Predecessors | Total slack | Free slack | Constraint | Resources | Work |
| --- | --- | --- | --- | --- | --- | --- | --- | --- | --- | --- | --- | --- |
| 187 | 1.5.7.3 | **Implementation** |  | 19.5d | 2005-09-30 | 2005-10-27 |  | 1d |  |  |  | 120h |
| 188 | 1.5.7.3.1 | Environment Setup |  | 2d | 2005-10-06 | 2005-10-10 | 184 | 0d |  | start no earlier than 2004-11-01 | Vinay | 16h |
| 189 | 1.5.7.3.2 | Code Development |  | 10d | 2005-10-10 | 2005-10-24 | 188 | 0d |  | start no earlier than 2004-11-08 | Vinay | 80h |
| 190 | 1.5.7.3.3 | Junit Test Development |  | 1d | 2005-09-30 | 2005-10-03 |  | 19.5d |  | start no earlier than 2005-07-15 |  |  |
| 191 | 1.5.7.3.4 | Code Reviews |  | 1.5d | 2005-10-24 | 2005-10-25 | 189 | 0d |  | finish no earlier than 2004-11-15 | Kalpesh; Charles | 24h |
| 192 | 1.5.7.3.5 | Bug Fixes |  | 2d | 2005-10-26 | 2005-10-27 | 191 | 1d |  | finish no earlier than 2005-07-18 |  |  |
| 193 | 1.5.7.4 | **Unit Testing** |  | 3d | 2005-09-30 | 2005-10-05 |  | 17.5d |  |  |  | 24h |
| 194 | 1.5.7.4.1 | Perform Testing |  | 3d | 2005-09-30 | 2005-10-05 |  | 17.5d |  | finish no earlier than 2005-07-12 | Vinay | 24h |
| 195 | 1.5.7.5 | **Integration Testing** |  | 3d | 2005-10-26 | 2005-10-28 |  | 0d |  |  |  | 40h |
| 196 | 1.5.7.5.1 | QA Testing |  | 2d | 2005-10-26 | 2005-10-27 | 191 | 0d |  |  | Eric | 16h |
| 197 | 1.5.7.5.2 | Evaluate Results |  | 1d | 2005-10-28 | 2005-10-28 | 196 | 0d |  | start no earlier than 2004-11-16 | Eric; Vinay; Kunal | 24h |
| 198 | 1.5.7.6 | Iteration Complete | milestone | 0d | 2005-10-28 | 2005-10-28 |  | 1d |  | start no earlier than 2005-10-28 |  |  |
| 199 | 1.6 | **Transition** |  | 23d | 2005-10-28 | 2005-11-30 | 42 | 0d |  |  |  | 657.6h |
| 200 | 1.6.1 | **Iteration I** |  | 18d | 2005-10-28 | 2005-11-23 |  | 0d |  |  |  | 617.6h |
| 201 | 1.6.1.1 | **QA Testing** |  | 12d | 2005-10-31 | 2005-11-15 |  | 6d |  |  |  | 112h |
| 202 | 1.6.1.1.1 | Setup of Environment |  | 2d | 2005-10-31 | 2005-11-01 |  | 6d | 0d |  | Kunal; Vinay | 32h |
| 203 | 1.6.1.1.2 | Regression Testing |  | 10d | 2005-11-02 | 2005-11-15 | 202 | 6d |  |  | Eric | 80h |
| 204 | 1.6.1.1.3 | Bug Fixes |  | 3d | 2005-11-11 | 2005-11-15 |  | 6d |  | finish no earlier than 2005-11-15 |  |  |
| 205 | 1.6.1.2 | **Documentation** |  | 18d | 2005-10-31 | 2005-11-23 |  | 0d |  |  |  | 505.6h |
| 206 | 1.6.1.2.1 | Application Developers Guide Document |  | 15d | 2005-10-31 | 2005-11-18 |  | 0d |  | finish no earlier than 2005-02-04 | Kunal; Eric; Vinay | 360h |
| 207 | 1.6.1.2.2 | Java Docs |  | 4d | 2005-10-31 | 2005-11-03 | 42 | 14d |  | start no earlier than 2005-01-24 | Kunal; Vinay | 41.6h |
| 208 | 1.6.1.2.3 | UPT User Guide Updation |  | 10d | 2005-10-31 | 2005-11-11 | 42 | 8d |  | start no earlier than 2005-02-07 | Eric | 80h |
| 209 | 1.6.1.2.4 | caCore Technical Guide Modifications |  | 2d | 2005-11-21 | 2005-11-22 | 206 | 0d |  | finish no earlier than 2005-02-14 | Eric | 16h |
| 210 | 1.6.1.2.5 | Release Notes |  | 1d | 2005-11-23 | 2005-11-23 | 209 | 0d |  |  | Eric | 8h |
| 211 | 1.6.1.3 | Iteration I Complete | milestone | 0d | 2005-10-28 | 2005-10-28 |  | 0d |  | start no earlier than 2005-02-15 |  |  |

| ID | WBS | Task | Type | Duration | Start | Finish | Predecessors | Total slack | Constraint | Resources | Work |
| --- | --- | --- | --- | --- | --- | --- | --- | --- | --- | --- | --- |
| 212 | 1.6.2 | **Iteration II** |  | 4d | 2005-11-23 | 2005-11-29 | 200 | 0d |  |  | 40h |
| 213 | 1.6.2.1 | **Staging Environment Testing** |  | 4d | 2005-11-24 | 2005-11-29 |  | 0d |  |  | 40h |
| 214 | 1.6.2.1.1 | Setup of Environment |  | 1d | 2005-11-24 | 2005-11-24 |  | 0d |  | Kunal; Vinay | 16h |
| 215 | 1.6.2.1.2 | Regression Testing |  | 3d | 2005-11-25 | 2005-11-29 | 214 | 0d |  | Eric | 24h |
| 216 | 1.6.2.1.3 | Bug Fixes |  | 1d | 2005-11-24 | 2005-11-24 |  | 3d | finish no earlier than 2005-11-15 |  |  |
| 217 | 1.6.2.2 | Iteration II Complete | milestone | 0d | 2005-11-23 | 2005-11-23 |  | 0d | start no earlier than 2005-02-28 |  |  |
| 218 | 1.6.3 | **Release** |  | 1d | 2005-11-30 | 2005-11-30 | 212 | 0d |  |  |  |
| 219 | 1.6.3.1 | Tag into the CVS & Release |  | 1d | 2005-11-30 | 2005-11-30 |  | 0d | start no earlier than 2005-03-07 |  |  |
